# GHealth2

How a schedule from MS Project changed from version to version. A marks actual dates.

## Version 1 (saved 2016-04-30)

Note of the change: Merge branch 'master' of http://www.github.com/ajbolous/labrep

| ID | WBS | Task | Duration | Start | Finish | Predecessors | Complete |
| --- | --- | --- | --- | --- | --- | --- | --- |
| 1 | 1 | **Project Organization** | 4.5d | 2016-03-13 08:00 A | 2016-03-17 12:00 A |  | 100% |
| 2 | 1.1 | **Week1** | 4.5d | 2016-03-13 08:00 A | 2016-03-17 12:00 A |  | 100% |
| 3 |  | Team Organization | 3d | 2016-03-13 08:00 A | 2016-03-15 17:00 A |  | 100% |
| 4 | 1.1.2 | **scope** | 1.5d | 2016-03-16 08:00 A | 2016-03-17 12:00 A | 3 | 100% |
| 5 |  | Define preliminary resources | 1d | 2016-03-16 08:00 A | 2016-03-16 17:00 A | 3 | 100% |
| 6 |  | First Team Meeting-Complete Organization | 4h | 2016-03-17 08:00 A | 2016-03-17 12:00 A | 5 | 100% |
| 7 |  | Scope complete | 0d | 2016-03-17 12:00 A | 2016-03-17 12:00 A | 4 | 100% |
| 8 | 2 | **Assignment ONE: Project Planning, Use Case Diagram, Questions, & Acceptance Testing** | 10d | 2016-03-20 08:00 A | 2016-04-03 17:00 A | 7 | 100% |
| 9 | 2.1 | **Week2** | 3.31d | 2016-03-20 08:00 A | 2016-03-23 10:30 A |  | 100% |
| 10 |  | Planning of a project | 1d | 2016-03-20 08:00 A | 2016-03-20 17:00 A |  | 100% |
| 11 |  | ms-project :first planning | 2h | 2016-03-21 08:00 A | 2016-03-21 10:00 A | 10 | 100% |
| 12 | 2.1.3 | **Design of a system Step1** | 2.06d | 2016-03-21 10:00 A | 2016-03-23 10:30 A | 10, 11 | 100% |
| 13 | 2.1.3.1 | **Creating Use Case diagram** | 2.06d | 2016-03-21 10:00 A | 2016-03-23 10:30 A |  | 100% |
| 14 | 2.1.3.1.1 | **Description of <Log in>** | 0.12d | 2016-03-21 10:00 A | 2016-03-21 11:00 A |  | 100% |
| 15 |  | Creating flow of events, info notes, etc. | 1h | 2016-03-21 10:00 A | 2016-03-21 11:00 A |  | 100% |
| 16 | 2.1.3.1.2 | **Description of <Documentation of HMO Approval>** | 0.12d | 2016-03-21 11:00 A | 2016-03-21 12:00 A | 14 | 100% |
| 17 |  | Creating flow of events, info notes, etc. | 1h | 2016-03-21 11:00 A | 2016-03-21 12:00 A |  | 100% |
| 18 | 2.1.3.1.3 | **Description of <Add New Patient>** | 0.12d | 2016-03-21 10:00 A | 2016-03-21 11:00 A |  | 100% |
| 19 |  | Creating flow of events, info notes, etc. | 1h | 2016-03-21 10:00 A | 2016-03-21 11:00 A |  | 100% |
| 20 | 2.1.3.1.4 | **Description of <Patient Identification>** | 0.12d | 2016-03-21 13:00 A | 2016-03-21 14:00 A | 16 | 100% |
| 21 |  | Creating flow of events, info notes, etc. | 1h | 2016-03-21 13:00 A | 2016-03-21 14:00 A |  | 100% |
| 22 | 2.1.3.1.5 | **Description of <Appointment Setting>** | 0.38d | 2016-03-21 14:00 A | 2016-03-21 17:00 A | 20 | 100% |
| 23 |  | Creating flow of events, info notes, etc. | 1h | 2016-03-21 15:00 A | 2016-03-21 16:00 A |  | 100% |
| 24 | 2.1.3.1.5.2 | **Included use case<Choose speciality>** | 0.12d | 2016-03-21 14:00 A | 2016-03-21 15:00 A |  | 100% |
| 25 |  | Creating flow of events, info notes, etc. | 1h | 2016-03-21 14:00 A | 2016-03-21 15:00 A |  | 100% |
| 26 | 2.1.3.1.5.3 | **Included use case<Choose Doctor>** | 0.06d | 2016-03-21 16:00 A | 2016-03-21 16:30 A | 23 | 100% |
| 27 |  | Creating flow of events, info notes, etc. | 0.5h | 2016-03-21 16:00 A | 2016-03-21 16:30 A |  | 100% |
| 28 | 2.1.3.1.5.4 | **Included Use Case<Choose Time>** | 0.06d | 2016-03-21 16:30 A | 2016-03-21 17:00 A | 26 | 100% |
| 29 |  | Creating flow of events, info notes, etc. | 0.5h | 2016-03-21 16:30 A | 2016-03-21 17:00 A |  | 100% |
| 30 | 2.1.3.1.6 | **Description of <Cancel Appointment>** | 0.06d | 2016-03-22 09:00 A | 2016-03-22 09:30 A |  | 100% |
| 31 |  | Creating flow of events, info notes, etc. | 0.5h | 2016-03-22 09:00 A | 2016-03-22 09:30 A |  | 100% |
| 32 | 2.1.3.1.7 | **Description of <Viewing Medical Record>** | 0.19d | 2016-03-22 09:30 A | 2016-03-22 11:00 A | 30 | 100% |
| 33 |  | Creating flow of events, info notes, etc. | 0.5h | 2016-03-22 09:30 A | 2016-03-22 10:00 A |  | 100% |
| 34 | 2.1.3.1.7.2 | **included Use Case<Open Medical record>** | 0.12d | 2016-03-22 10:00 A | 2016-03-22 11:00 A | 33 | 100% |
| 35 |  | Creating flow of events, info notes, etc. | 1h | 2016-03-22 10:00 A | 2016-03-22 11:00 A |  | 100% |
| 36 | 2.1.3.1.7.3 | **Extended Use Case<searching>** | 0.06d | 2016-03-22 09:30 A | 2016-03-22 10:00 A |  | 100% |
| 37 |  | Creating flow of events, info notes, etc. | 0.5h | 2016-03-22 09:30 A | 2016-03-22 10:00 A |  | 100% |
| 38 | 2.1.3.1.8 | **Description of <Visit Documentation>** | 0.12d | 2016-03-22 11:00 A | 2016-03-22 12:00 A | 32 | 100% |
| 39 |  | Creating flow of events, info notes, etc. | 1h | 2016-03-22 11:00 A | 2016-03-22 12:00 A |  | 100% |
| 40 | 2.1.3.1.9 | **Description of <Producing medical test Referral>** | 0.12d | 2016-03-22 13:30 A | 2016-03-22 14:30 A | 38 | 100% |
| 41 |  | Creating flow of events, info notes, etc. | 1h | 2016-03-22 13:30 A | 2016-03-22 14:30 A |  | 100% |
| 42 | 2.1.3.1.10 | **Description of <Viewing Referral info>** | 0.06d | 2016-03-22 14:30 A | 2016-03-22 15:00 A | 40 | 100% |
| 43 |  | Creating flow of events, info notes, etc. | 0.5h | 2016-03-22 14:30 A | 2016-03-22 15:00 A |  | 100% |
| 44 | 2.1.3.1.11 | **Description of <Filling test results>** | 0.12d | 2016-03-22 15:00 A | 2016-03-22 16:00 A | 42 | 100% |
| 45 |  | Creating flow of events, info notes, etc. | 1h | 2016-03-22 15:00 A | 2016-03-22 16:00 A |  | 100% |
| 46 | 2.1.3.1.12 | **Description of <information request from HMO>** | 0.31d | 2016-03-23 08:00 A | 2016-03-23 10:30 A | 44 | 100% |
| 47 |  | Creating flow of events, info notes, etc. | 1.5h | 2016-03-23 08:00 A | 2016-03-23 09:30 A |  | 100% |
| 48 | 2.1.3.1.12.2 | **extended Use Case<complete Record request>** | 0.06d | 2016-03-23 09:30 A | 2016-03-23 10:00 A | 47 | 100% |
| 49 |  | Creating flow of events, info notes, etc. | 0.5h | 2016-03-23 09:30 A | 2016-03-23 10:00 A |  | 100% |
| 50 | 2.1.3.1.12.3 | **Extended Use Case<Partial information>** | 0.06d | 2016-03-23 10:00 A | 2016-03-23 10:30 A | 48 | 100% |
| 51 |  | Creating flow of events, info notes, etc. | 0.5h | 2016-03-23 10:00 A | 2016-03-23 10:30 A |  | 100% |
| 52 | 2.1.3.1.13 | **Description of <Submit report>** | 0.19d | 2016-03-21 10:00 A | 2016-03-21 11:30 A | 14SS | 100% |
| 53 |  | Creating flow of events, info notes, etc. | 0.5h | 2016-03-21 10:00 A | 2016-03-21 10:30 A |  | 100% |
| 54 | 2.1.3.1.13.2 | **included Use Case <Save report>** | 0.06d | 2016-03-21 10:30 A | 2016-03-21 11:00 A | 53 | 100% |
| 55 |  | Creating flow of events, info notes, etc. | 0.5h | 2016-03-21 10:30 A | 2016-03-21 11:00 A |  | 100% |
| 56 | 2.1.3.1.13.3 | **included Use Case <Send report to Doctor>** | 0.06d | 2016-03-21 11:00 A | 2016-03-21 11:30 A | 54 | 100% |
| 57 |  | Creating flow of events, info notes, etc. | 0.5h | 2016-03-21 11:00 A | 2016-03-21 11:30 A |  | 100% |
| 58 | 2.1.3.1.14 | **Description of <Send payment information to HMO>** | 0.21d | 2016-03-21 11:30 A | 2016-03-21 14:10 A | 52 | 100% |
| 59 |  | Creating flow of events, info notes, etc. | 40min | 2016-03-21 11:30 A | 2016-03-21 13:10 A |  | 100% |
| 60 | 2.1.3.1.14.2 | **included Use Case <Enter payment prices>** | 0.12d | 2016-03-21 13:10 A | 2016-03-21 14:10 A | 59 | 100% |
| 61 |  | Creating flow of events, info notes, etc. | 1h | 2016-03-21 13:10 A | 2016-03-21 14:10 A |  | 100% |
| 62 | 2.1.3.1.15 | **Description of <View weekly Report>** | 0.06d | 2016-03-21 14:10 A | 2016-03-21 14:40 A | 58 | 100% |
| 63 |  | Creating flow of events, info notes, etc. | 0.5h | 2016-03-21 14:10 A | 2016-03-21 14:40 A |  | 100% |
| 64 | 2.1.3.1.16 | **Description of <View monthly Report>** | 0.06d | 2016-03-21 14:40 A | 2016-03-21 15:10 A | 62 | 100% |
| 65 |  | Creating flow of events, info notes, etc. | 0.5h | 2016-03-21 14:40 A | 2016-03-21 15:10 A |  | 100% |
| 66 | 2.1.3.1.17 | **Description of <request monthly report>** | 0.06d | 2016-03-21 15:10 A | 2016-03-21 15:40 A | 64 | 100% |
| 67 |  | Creating flow of events, info notes, etc. | 0.5h | 2016-03-21 15:10 A | 2016-03-21 15:40 A |  | 100% |
| 68 | 2.1.3.1.18 | **Description of <View custom Reports>** | 0.22d | 2016-03-21 15:40 A | 2016-03-22 08:25 A | 66 | 100% |
| 69 |  | Creating flow of events, info notes, etc. | 45min | 2016-03-21 15:40 A | 2016-03-21 16:25 A |  | 100% |
| 70 | 2.1.3.1.18.2 | **extended use Case<View periodic Reports>** | 0.06d | 2016-03-21 16:25 A | 2016-03-21 16:55 A | 69 | 100% |

| ID | WBS | Task | Duration | Start | Finish | Predecessors | Complete | Total float | Constraint |
| --- | --- | --- | --- | --- | --- | --- | --- | --- | --- |
| 71 |  | Creating flow of events, info notes, etc. | 0.5h | 2016-03-21 16:25 A | 2016-03-21 16:55 A |  | 100% |  |  |
| 72 | 2.1.3.1.18.3 | **extended use Case<View last months Reports>** | 0.06d | 2016-03-21 16:55 A | 2016-03-22 08:25 A | 70 | 100% |  |  |
| 73 |  | Creating flow of events, info notes, etc. | 0.5h | 2016-03-21 16:55 A | 2016-03-22 08:25 A |  | 100% |  |  |
| 74 | 2.2 | **Week3** | 4d | 2016-03-27 08:00 A | 2016-03-30 17:00 A | 9FS+1d | 100% |  |  |
| 75 | 2.2.1 | **Creating Use Case diagram -Continues** | 1d | 2016-03-27 08:00 A | 2016-03-27 17:00 A |  | 100% |  |  |
| 76 |  | Meeting - Review Use Case Diagram | 2h | 2016-03-27 08:00 A | 2016-03-27 10:00 A |  | 100% |  |  |
| 77 |  | Fixing found problems | 6h | 2016-03-27 10:00 A | 2016-03-27 17:00 A | 76 | 100% |  |  |
| 78 |  | Use Case Diagram is finished | 0d | 2016-03-27 17:00 A | 2016-03-27 17:00 A | 13, 75, 77 | 100% |  |  |
| 79 | 2.2.3 | **Creating Acceptance Testing** | 2d | 2016-03-28 08:00 A | 2016-03-29 17:00 A | 78 | 100% |  |  |
| 80 |  | Test Case for functionality of <Documentation of HMO Approval> | 2h | 2016-03-28 08:00 A | 2016-03-28 10:00 A |  | 100% |  |  |
| 81 |  | Test Case for functionality of: <Add New Patient> | 1h | 2016-03-28 10:00 A | 2016-03-28 11:00 A | 80 | 100% |  |  |
| 82 |  | Test Case for functionality of <Patient Identification> | 1h | 2016-03-28 11:00 A | 2016-03-28 12:00 A | 81 | 100% |  |  |
| 83 |  | Test Case for functionality of <Appointment Setting><Choose speciality><Choose Doctor><Choose Time> | 1h | 2016-03-28 13:00 A | 2016-03-28 14:00 A | 82 | 100% |  |  |
| 84 |  | Test Case for functionality of <Cancel Appointment> | 1h | 2016-03-28 14:00 A | 2016-03-28 15:00 A | 83 | 100% |  |  |
| 85 |  | Test Case for functionality of < Visit documentation > | 1.5h | 2016-03-28 08:00 A | 2016-03-28 09:30 A | 80SS, 84 | 100% |  |  |
| 86 |  | Test Case for functionality of <open medical record > | 1h | 2016-03-28 09:30 A | 2016-03-28 10:30 A | 85 | 100% |  |  |
| 87 |  | Test Case for functionality of <viewing medical record ><searching> | 2h | 2016-03-28 10:30 A | 2016-03-28 13:30 A | 86 | 100% |  |  |
| 88 |  | Test Case for functionality of <producing medical test referral > | 1.5h | 2016-03-28 13:30 A | 2016-03-28 15:00 A | 87 | 100% |  |  |
| 89 |  | Test Case for functionality of <viewing referral info > | 1h | 2016-03-28 15:00 A | 2016-03-28 16:00 A | 88 | 100% |  |  |
| 90 |  | Test Case for functionality of <request monthly report> | 1h | 2016-03-28 08:00 A | 2016-03-28 09:00 A | 80SS, 89 | 100% |  |  |
| 91 |  | Test Case for functionality of <view weekly report> | 1h | 2016-03-28 09:00 A | 2016-03-28 10:00 A | 90 | 100% |  |  |
| 92 |  | Test Case for functionality of <View monthly Report> | 1h | 2016-03-28 10:00 A | 2016-03-28 11:00 A | 91 | 100% |  |  |
| 93 |  | Test Case for functionality of <View custom Reports><View last months Reports><View periodic Reports> | 2h | 2016-03-28 11:00 A | 2016-03-28 14:00 A | 92 | 100% |  |  |
| 94 |  | Test Case for functionality of <Filling test results> | 1h | 2016-03-28 08:00 A | 2016-03-28 09:00 A | 80SS, 93 | 100% |  |  |
| 95 |  | Test Case for functionality of <information request from HMO><complete Record request><Partial information request> | 2h | 2016-03-28 09:00 A | 2016-03-28 11:00 A | 94 | 100% |  |  |
| 96 |  | Test Case for functionality of <Send payment information to HMO><Enter payment prices> | 1h | 2016-03-28 08:00 A | 2016-03-28 09:00 A | 80SS, 95 | 100% |  |  |
| 97 |  | Test Case for functionality of <Login> | 1h | 2016-03-28 09:00 A | 2016-03-28 10:00 A | 96 | 100% |  |  |
| 98 |  | Test Case for functionality of <Submit report><Send report to Doctor><Save report> | 2h | 2016-03-28 10:00 A | 2016-03-28 12:00 A | 97 | 100% |  |  |
| 99 |  | Meeting - Review Acceptance Testing | 1d | 2016-03-29 08:00 A | 2016-03-29 17:00 A | 98 | 100% |  | start no earlier than 2016-03-29 08:00 |
| 100 |  | Acceptance Testing is finished | 0d | 2016-03-29 17:00 A | 2016-03-29 17:00 A | 99 | 100% |  |  |
| 101 |  | Answer questions | 1d | 2016-03-30 08:00 A | 2016-03-30 17:00 A | 100 | 100% |  |  |
| 102 | 2.3 | **Week 4- Part A** | 1d | 2016-04-03 08:00 A | 2016-04-03 17:00 A | 74FS+1d | 100% |  |  |
| 103 |  | Meeting - Review all tasks | 1d | 2016-04-03 08:00 A | 2016-04-03 17:00 A | 101 | 100% |  |  |
| 104 |  | Submission ONE is finished | 0d | 2016-04-03 17:00 A | 2016-04-03 17:00 A | 103 | 100% |  |  |
| 105 |  | SUBMIT Task One | 0d | 2016-04-04 08:00 A | 2016-04-04 08:00 A | 104 | 100% |  | start no earlier than 2016-04-04 08:00 |
| 106 | 4 | **Submission TWO: Class, Activity, Sequence, Package, Deployment Diagrams, Prototype, Questions** | 15d | 2016-04-04 08:00 A | 2016-05-01 17:00 | 105 | 39% | 0d |  |
| 107 | 4.1 | **Week 4 - Continue** | 1d | 2016-04-04 08:00 A | 2016-04-04 17:00 |  | 88% | 3d |  |
| 108 | 4.1.1 | **Design of a system Step2** | 1d | 2016-04-04 08:00 A | 2016-04-04 17:00 A |  | 100% |  |  |
| 109 | 4.1.1.1 | **Creating Class diagram** | 1d | 2016-04-04 08:00 A | 2016-04-04 17:00 A |  | 100% |  |  |
| 110 |  | Defining Entiies | 1d | 2016-04-04 08:00 A | 2016-04-04 17:00 A | 104 | 100% |  |  |
| 111 |  | Defining Controllers | 0.5d | 2016-04-04 08:00 A | 2016-04-04 12:00 A | 110 | 100% |  |  |
| 112 |  | Defining Boundaries | 0.5d | 2016-04-04 08:00 A | 2016-04-04 12:00 A | 111 | 100% |  |  |
| 113 |  | defining Server | 0.25d | 2016-04-04 08:00 A | 2016-04-04 10:00 A | 104, 112 | 100% |  |  |
| 114 |  | Defining Client | 0.25d | 2016-04-04 08:00 A | 2016-04-04 10:00 A | 104, 113 | 100% |  |  |
| 115 |  | integration | 1d | 2016-04-04 08:00 A | 2016-04-04 17:00 A | 104, 110, 111, 114 | 100% |  |  |
| 116 |  | Defining packages | 0.5d | 2016-04-04 08:00 | 2016-04-04 12:00 | 105 |  | 3.5d |  |
| 117 | 4.2 | **Week5** | 4.48d | 2016-04-10 08:00 A | 2016-04-14 11:50 | 107 | 42% | 0.77d |  |
| 118 |  | Meeting - Review Class Diagram | 2h | 2016-04-10 08:00 A | 2016-04-10 10:00 A |  | 100% |  | start no earlier than 2016-04-10 08:00 |
| 119 |  | Class Diagram is finished | 0d | 2016-04-10 10:00 A | 2016-04-10 10:00 A | 118 | 100% |  |  |
| 120 | 4.2.3 | **Creating Activity Diagrams** | 2.85d | 2016-04-10 10:00 A | 2016-04-13 08:50 A | 119 | 100% |  |  |
| 121 |  | Activity Diagram for <Login > | 30min | 2016-04-10 10:00 A | 2016-04-10 10:30 A |  | 100% |  |  |
| 122 |  | Activity Diagram for<Save Report> | 30min | 2016-04-10 10:30 A | 2016-04-10 11:00 A | 121 | 100% |  |  |
| 123 |  | Activity Diagram for<Send Report To Doctor> | 40min | 2016-04-10 11:00 A | 2016-04-10 11:40 A | 122 | 100% |  |  |
| 124 |  | Activity Diagram for<Send Payment information> | 1h | 2016-04-10 11:40 A | 2016-04-10 13:40 A | 123 | 100% |  |  |
| 125 |  | Activity Diagram for <Submit Report> | 1h | 2016-04-10 13:40 A | 2016-04-10 14:40 A | 124 | 100% |  |  |
| 126 |  | Activity Diagram for<View Weekly Report> | 1h | 2016-04-10 14:40 A | 2016-04-10 15:40 A | 125 | 100% |  |  |
| 127 |  | Activity Diagram for<Request Monthly Report> | 50min | 2016-04-10 15:40 A | 2016-04-10 16:30 A | 126 | 100% |  |  |
| 128 |  | Activity Diagram for<View Monthly Report> | 30min | 2016-04-10 16:30 A | 2016-04-10 17:00 A | 127 | 100% |  |  |
| 129 |  | Activity Diagram for<View Custom Reports> | 2h | 2016-04-11 08:00 A | 2016-04-11 10:00 A | 128 | 100% |  |  |
| 130 |  | Activity Diagram for <Appointment Setting> | 3h | 2016-04-11 10:00 A | 2016-04-11 14:00 A | 129 | 100% |  |  |
| 131 |  | Activity Diagram for <Cancel Appointment> | 50min | 2016-04-11 14:00 A | 2016-04-11 14:50 A | 130 | 100% |  |  |
| 132 |  | Activity Diagram for <Patient Identification> | 1h | 2016-04-11 14:50 A | 2016-04-11 15:50 A | 131 | 100% |  |  |
| 133 |  | Meeting - Review Activity Diagram | 10h | 2016-04-11 15:50 A | 2016-04-13 08:50 A | 121, 132 | 100% |  |  |
| 134 |  | Activity Diagram is finished | 0d | 2016-04-13 08:50 A | 2016-04-13 08:50 A | 133 | 100% |  |  |
| 135 | 4.2.4 | **Creating Sequence Diagrams** | 4.23d | 2016-04-10 10:00 A | 2016-04-14 11:50 | 120 | 13% | 0.77d |  |
| 136 |  | Sequence Diagram for<view Monthly Report> | 1h | 2016-04-11 13:30 A | 2016-04-11 14:30 A | 119 | 100% |  |  |
| 137 |  | Sequence Diagram for <Request Monthly Report> | 0.5h | 2016-04-10 10:00 A | 2016-04-10 10:30 A | 119 | 100% |  |  |
| 138 |  | Sequence Diagram for <View Custom Report> | 11h | 2016-04-10 10:00 A | 2016-04-14 11:50 | 119 | 27% | 0.77d |  |
| 139 |  | Sequence Diagram for <View Weekly Report> | 2h | 2016-04-10 10:00 A | 2016-04-10 12:00 A | 119 | 100% |  |  |
| 140 |  | <New Task> | 1d | 2016-04-10 10:00 | 2016-04-11 10:00 |  |  |  |  |

| ID | WBS | Task | Duration | Start | Finish | Predecessors | Total float | Constraint |
| --- | --- | --- | --- | --- | --- | --- | --- | --- |
| 141 |  | <New Task> | 1d | 2016-04-10 10:00 | 2016-04-11 10:00 |  |  |  |
| 142 |  | <New Task> | 1d | 2016-04-10 10:00 | 2016-04-11 10:00 |  |  |  |
| 143 |  | <New Task> | 1d | 2016-04-10 10:00 | 2016-04-11 10:00 |  |  |  |
| 144 |  | Meeting - Review Sequence Diagram | 0.5d | 2016-04-13 08:50 | 2016-04-13 13:50 | 136 | 1.65d |  |
| 145 |  | Sequence Diagram is finished | 0d | 2016-04-13 13:50 | 2016-04-13 13:50 | 144 | 1.65d |  |
| 146 | 4.3 | **Week 6** | 4.75d | 2016-04-14 11:50 | 2016-04-21 09:50 | 117 | 0.77d |  |
| 147 | 4.3.1 | **Creating Packages and Deployment diagrams** | 1.25d | 2016-04-14 11:50 | 2016-04-17 14:50 |  | 0.77d |  |
| 148 |  | Creating Packages and Deployment diagrams | 1d | 2016-04-14 11:50 | 2016-04-17 11:50 |  | 0.77d |  |
| 149 |  | Meeting - Review Packages & Deployment Diagrams | 2h | 2016-04-17 11:50 | 2016-04-17 14:50 | 148 | 0.77d |  |
| 150 |  | Packages & Deployment Diagrams are finished | 0d | 2016-04-17 14:50 | 2016-04-17 14:50 | 149 | 0.77d |  |
| 151 |  | Answer questions | 0.5d | 2016-04-17 14:50 | 2016-04-18 09:50 | 147 | 0.77d |  |
| 152 |  | Development Prototype on the base of OCSF | 3d | 2016-04-18 09:50 | 2016-04-21 09:50 | 151 | 0.77d |  |
| 153 | 4.4 | **Week7-TBD continues** | 1d | 2016-05-01 08:00 | 2016-05-01 17:00 | 146 |  |  |
| 154 |  | Testing Prototype | 1d | 2016-05-01 08:00 | 2016-05-01 17:00 | 152 | 0d |  |
| 155 |  | Releasing Prototype | 0d | 2016-05-01 17:00 | 2016-05-01 17:00 | 154 | 0d |  |
| 156 |  | Submission TWO is finished | 0d | 2016-05-01 17:00 | 2016-05-01 17:00 | 155 | 0d |  |
| 157 |  | SUBMIT Task Two | 0d | 2016-05-02 08:00 | 2016-05-02 08:00 |  | 0d | start no earlier than 2016-05-02 08:00 |
| 158 | 6 | **Submission THREE: Development Code, Questions** | 25d | 2016-05-02 08:00 | 2016-06-13 08:00 | 156, 157 | 0d |  |
| 159 | 6.1 | **Development project code on the base of Class and other diagrams** | 20d | 2016-05-02 08:00 | 2016-06-02 17:00 |  |  |  |
| 160 | 6.1.1 | **Development DataBase** | 2d | 2016-05-02 08:00 | 2016-05-03 17:00 |  |  |  |
| 161 |  | Defining and creating: <Name of Table 1>, <Name of Table 2> | 0.5d | 2016-05-02 08:00 | 2016-05-02 12:00 |  | 1d |  |
| 162 |  | Defining and creating <Name of Table 2> | 0.5d | 2016-05-02 13:00 | 2016-05-02 17:00 | 161 | 1d |  |
| 163 | 6.1.2 | **Realization Three-tier Model** | 18d | 2016-05-03 08:00 | 2016-06-01 17:00 | 160 |  |  |
| 164 | 6.1.2.1 | **Client Design and Realization** | 5d | 2016-05-03 08:00 | 2016-05-09 17:00 |  |  |  |
| 165 |  | Client GUI design and realization | 2d | 2016-05-03 08:00 | 2016-05-04 17:00 |  | 0d |  |
| 166 |  | Defining Controllers and their realization | 2d | 2016-05-05 08:00 | 2016-05-08 17:00 | 165 | 0d |  |
| 167 |  | Testing & Debugging Code | 1d | 2016-05-09 08:00 | 2016-05-09 17:00 | 166 | 0d |  |
| 168 | 6.1.2.2 | **Server design and realization** | 7d | 2016-05-10 08:00 | 2016-05-22 17:00 | 164 |  |  |
| 169 |  | Server GUI | 1d | 2016-05-10 08:00 | 2016-05-10 17:00 |  | 1.75d |  |
| 170 |  | Realization interaction with DataBase | 1d | 2016-05-15 08:00 | 2016-05-15 17:00 | 169 | 1.75d |  |
| 171 |  | Testing & Debugging Code | 1d | 2016-05-16 08:00 | 2016-05-16 17:00 | 170 | 1.75d |  |
| 172 | 6.1.2.2.4 | **Realization Controllers** | 4d | 2016-05-17 08:00 | 2016-05-22 17:00 | 171 |  |  |
| 173 |  | Controller1, controller2 | 0.5d | 2016-05-17 08:00 | 2016-05-17 12:00 |  | 1.75d |  |
| 174 |  | Controller3 | 2h | 2016-05-17 13:00 | 2016-05-17 15:00 | 173 | 1.75d |  |
| 175 |  | Testing & Debugging Code | 1.5d | 2016-05-17 15:00 | 2016-05-19 10:00 | 174 | 1.75d |  |
| 176 | 6.1.2.3 | **Entity Realization JDBC/Hibernate (ORM) or their mix** | 3d | 2016-05-19 10:00 | 2016-05-26 10:00 | 168 |  |  |
| 177 |  | Realization <Entity1>, <Entity2>, <Entity3> | 3h | 2016-05-19 10:00 | 2016-05-19 14:00 |  | 2.5d |  |
| 178 |  | Realization <Entity4> | 1h | 2016-05-19 14:00 | 2016-05-19 15:00 | 177 | 2.5d |  |
| 179 |  | Realization Client-Server interaction on the base of OCSF | 2d | 2016-05-26 10:00 | 2016-05-30 10:00 | 176 | 1.75d |  |
| 180 |  | Testing & Debugging Code | 1d | 2016-05-30 10:00 | 2016-05-31 10:00 | 179 | 1.75d |  |
| 181 |  | Integration the Code | 1d | 2016-06-05 08:00 | 2016-06-05 17:00 | 159 | 9.75d |  |
| 182 |  | Final review meeting | 2h | 2016-06-06 08:00 | 2016-06-06 10:00 | 181 | 9.75d |  |
| 183 |  | Submission THREE is finished | 0d | 2016-06-13 08:00 | 2016-06-13 08:00 |  | 0d | start no earlier than 2016-06-13 08:00 |
| 184 | 7 | **Submission FOUR: Testing Project** | 6d | 2016-06-13 08:00 | 2016-06-20 17:00 | 183 | 0d |  |
| 185 | 7.1 | **Testing Project** | 4d | 2016-06-13 08:00 | 2016-06-16 17:00 |  |  |  |
| 186 | 7.1.1 | **Unit Testing** | 2d | 2016-06-13 08:00 | 2016-06-14 17:00 |  |  |  |
| 187 |  | Functionality 1 (Method1(), Method2()) | 1d | 2016-06-13 08:00 | 2016-06-13 17:00 |  | 0d |  |
| 188 |  | Functionality 2 (Method1(), Method2()) | 1d | 2016-06-14 08:00 | 2016-06-14 17:00 | 187 | 0d |  |
| 189 | 7.1.2 | **Acceptance Testing** | 2d | 2016-06-13 08:00 | 2016-06-14 17:00 | 186 |  |  |
| 190 |  | Use Case 1 | 1d | 2016-06-13 08:00 | 2016-06-13 17:00 |  | 0d |  |
| 191 |  | Use Case 2 | 1d | 2016-06-14 08:00 | 2016-06-14 17:00 | 190 | 0d |  |
| 192 |  | Testing and Debugging | 2d | 2016-06-19 08:00 | 2016-06-20 17:00 | 185 | 0d |  |
| 193 |  | Submission FOUR is finished | 0d | 2016-06-20 17:00 | 2016-06-20 17:00 | 192 | 0d |  |
| 194 |  | Project is Finished! | 0d | 2016-06-21 08:00 | 2016-06-21 08:00 | 193 | 0d | start no earlier than 2016-06-21 08:00 |

## Version 2 (saved 2016-05-01)

Note of the change: ms project

Last finish stays 2016-06-21. Complete tasks 89 → 124.

Added:

| ID | Task | Duration | Start | Finish | Predecessors | Resources |
| --- | --- | --- | --- | --- | --- | --- |
| 133 | Activity Diagram for <Open Medical Record> | 30min | 2016-04-10 10:00 A | 2016-04-10 10:30 A | 132SS | Maysam |
| 134 | Activity Diagram for<Producing medical test Referral> | 45min | 2016-04-10 10:00 A | 2016-04-10 10:45 A | 133 | Maysam |
| 135 | Activity Diagram for<Viewing Medical Record> | 30min | 2016-04-10 10:00 A | 2016-04-10 10:30 A | 134 | Maysam |
| 136 | Activity Diagram for< Visit Documentation > | 1h | 2016-04-10 10:00 A | 2016-04-10 11:00 A | 135 | Maysam |
| 137 | Activity Diagram for<filling test results> | 30min | 2016-04-10 10:00 A | 2016-04-10 10:30 A |  | Ahmad |
| 138 | Activity Diagram for <viewing Referral info> | 50min | 2016-04-10 10:00 A | 2016-04-10 10:50 A | 137 | Maysam |
| 139 | Activity Diagram for <information request from HMO> | 30min | 2016-04-10 10:00 A | 2016-04-10 10:30 A | 138 | Ahdab |
| 151 | Sequence Diagram for <Submit Report> | 30min | 2016-04-13 08:50 A | 2016-04-13 09:20 A | 150 | Boulus |
| 152 | Sequence Diagram for<Viewing Medical Record > | 50min | 2016-04-13 08:50 A | 2016-04-13 09:40 A | 149SS | Maysam |
| 153 | Sequence Diagram for <Viewing Referral info> | 15min | 2016-04-13 08:50 A | 2016-04-13 09:05 A | 152 | Maysam |
| 154 | Sequence Diagram for <Visit Documentation> | 30min | 2016-04-13 08:50 A | 2016-04-13 09:20 A | 153 | Maysam |
| 155 | Sequence Diagram for <add new patient> | 1h | 2016-04-13 08:50 A | 2016-04-13 09:50 A | 152SS | Ahmad |
| 156 | Sequence Diagram for <documantion of hmo approval> | 30min | 2016-04-13 08:50 A | 2016-04-13 09:20 A | 155 | Ahmad |
| 157 | Sequence Diagram for<filling test results > | 20min | 2016-04-13 08:50 A | 2016-04-13 09:10 A | 156 | Ahmad |
| 158 | Sequence Diagram for <information request from hmo > | 30min | 2016-04-13 08:50 A | 2016-04-13 09:20 A | 157 | Ahmad |
| 159 | Sequence Diagram for <openMedicalRecord> | 30min | 2016-04-13 08:50 A | 2016-04-13 09:20 A | 155SS | Maysam |
| 160 | Sequence Diagram for <searching> | 15min | 2016-04-13 08:50 A | 2016-04-13 09:05 A | 159 | Maysam |
| 161 | Sequence Diagram for <Login> | 30min | 2016-04-10 10:00 A | 2016-04-10 10:30 A | 159SS | Boulus |
| 162 | Sequence Diagram for <Send payment information to HMO > | 1h | 2016-04-10 10:00 A | 2016-04-10 11:00 A | 161 | Boulus |

Changed:

| ID | Task | Start | Finish | Duration | Complete | Total float | Predecessors | Other |
| --- | --- | --- | --- | --- | --- | --- | --- | --- |
| 106 | **Submission TWO: Class, Activity, Sequence, Package, Deployment Diagrams, Prototype, Questions** |  | 2016-05-01 17:00 → 2016-05-02 09:50 (+1d) | 15d → 15.23d | 39% → 99% | 0d → 30.77d |  |  |
| 107 | **Week 4 - Continue** |  | 2016-04-04 17:00 A |  | 88% → 100% | 3d → none | none → 102 |  |
| 110 | Defining Entiies |  |  |  |  |  |  | resources none → Ahdab [20%]; Ahmad [20%]; Boulus [20%]; Maysam [20%]; Muhamad [20%] |
| 111 | Defining Controllers |  |  |  |  |  |  | resources none → Ahdab [20%]; Ahmad [20%]; Boulus [20%]; Maysam [20%]; Muhamad [20%] |
| 112 | Defining Boundaries |  |  |  |  |  |  | resources none → Ahdab [20%]; Ahmad [20%]; Boulus [20%]; Maysam [20%]; Muhamad [20%] |
| 113 | defining Server |  |  |  |  |  |  | resources none → Ahdab [20%]; Ahmad [20%]; Boulus [20%]; Maysam [20%]; Muhamad [20%] |
| 114 | Defining Client |  |  |  |  |  |  | resources none → Ahdab [20%]; Ahmad [20%]; Boulus [20%]; Maysam [20%]; Muhamad [20%] |
| 115 | integration |  |  |  |  |  |  | resources none → Ahdab [20%]; Ahmad [20%]; Boulus [20%]; Maysam [20%]; Muhamad [20%] |
| 116 | Defining packages | 2016-04-04 08:00 A | 2016-04-04 12:00 → 2016-04-04 08:30 A | 0.5d → 30min | 0% → 100% | 3.5d → none | 105 → 105, 115, 108 | resources none → Ahdab [20%]; Ahmad [20%]; Boulus [20%]; Maysam [20%]; Muhamad [20%] |
| 117 | **Week5** |  |  |  | 42% → 97% | 0.77d → 37.52d |  |  |
| 118 | Meeting - Review Class Diagram |  |  |  |  |  |  | resources none → Ahdab [20%]; Ahmad [20%]; Boulus [20%]; Maysam [20%]; Muhamad [20%] |
| 119 | Class Diagram is finished |  |  |  |  |  |  | resources none → Ahdab [20%]; Ahmad [20%]; Boulus [20%]; Maysam [20%]; Muhamad [20%] |
| 120 | **Creating Activity Diagrams** |  | 2016-04-13 08:50 A → 2016-04-13 08:50 |  | 100% → 94% | none → 38.9d |  |  |
| 126 | Activity Diagram for<View Weekly Report> |  | 2016-04-10 15:40 A → 2016-04-10 17:00 | 1h → 2.33h | 100% → 43% | none → 41d | 125 → 125SS | constraint none → finish no earlier than 2016-04-10 17:00 |
| 130 | Activity Diagram for <Appointment Setting> |  |  |  |  |  | 129 → 129SS |  |
| 140 | Meeting - Review Activity Diagram |  | 2016-04-13 08:50 A → 2016-04-12 08:50 A (-1d) | 10h → 2h |  |  |  |  |
| 141 | Activity Diagram is finished |  |  |  |  |  |  | resources none → Ahdab [20%]; Ahmad [20%]; Boulus [20%]; Maysam [20%]; Muhamad [20%] |
| 142 | **Creating Sequence Diagrams** |  | 2016-04-14 11:50 A |  | 13% → 100% | 0.77d → none |  |  |
| 144 | Sequence Diagram for <Request Monthly Report> |  |  |  |  |  | 119 → 119, 143 |  |
| 145 | Sequence Diagram for <View Custom Report> |  | 2016-04-14 11:50 A |  | 27% → 100% | 0.77d → none | 119 → 119, 144 |  |
| 146 | Sequence Diagram for <View Weekly Report> |  |  |  |  |  | 119 → 119, 145 |  |
| 147 | Sequence Diagram for <Appointment Setting> | 2016-04-10 10:00 → 2016-04-13 08:50 A (+3d) | 2016-04-11 10:00 → 2016-04-13 09:50 A (+2d) | 1d → 1h | 0% → 100% |  | none → 143SS | was named <New Task>; resources none → Muhamad |
| 148 | Sequence Diagram for <Cancel Appointment> | 2016-04-10 10:00 → 2016-04-13 08:50 A (+3d) | 2016-04-11 10:00 → 2016-04-13 09:20 A (+2d) | 1d → 30min | 0% → 100% |  | none → 147 | was named <New Task>; resources none → Muhamad |
| 149 | Sequence Diagram for <Patient Identification for appointment setting> | 2016-04-10 10:00 → 2016-04-13 08:50 A (+3d) | 2016-04-11 10:00 → 2016-04-13 09:35 A (+2d) | 1d → 45min | 0% → 100% |  | none → 148 | was named <New Task>; resources none → Muhamad |
| 150 | Sequence Diagram for <Producing medical test Referral> | 2016-04-10 10:00 → 2016-04-13 08:50 A (+3d) | 2016-04-11 10:00 → 2016-04-13 09:20 A (+2d) | 1d → 30min | 0% → 100% |  | none → 146SS | was named <New Task>; resources none → Ahmad |
| 163 | Meeting - Review Sequence Diagram | 2016-04-13 08:50 A | 2016-04-13 13:50 A |  | 0% → 100% | 1.65d → none |  | resources none → Ahdab [20%]; Ahmad [20%]; Boulus [20%]; Maysam [20%]; Muhamad [20%] |
| 164 | Sequence Diagram is finished | 2016-04-13 13:50 A | 2016-04-13 13:50 A |  | 0% → 100% | 1.65d → none |  | resources none → Ahdab [20%]; Ahmad [20%]; Boulus [20%]; Maysam [20%]; Muhamad [20%] |
| 165 | **Week 6** | 2016-04-14 11:50 → 2016-04-17 11:50 A (+3d) | 2016-04-21 09:50 → 2016-05-01 09:50 A (+10d) |  | 0% → 100% | 0.77d → none | 117 → 117FS+1d |  |
| 166 | **Creating Packages** | 2016-04-14 11:50 → 2016-04-17 11:50 A (+3d) | 2016-04-17 14:50 → 2016-04-18 14:50 A (+1d) |  | 0% → 100% | 0.77d → none |  | was named Creating Packages and Deployment diagrams |
| 167 | Creating Packages | 2016-04-14 11:50 → 2016-04-17 11:50 A (+3d) | 2016-04-17 11:50 → 2016-04-18 11:50 A (+1d) |  | 0% → 100% | 0.77d → none |  | was named Creating Packages and Deployment diagrams; resources none → Ahdab [20%]; Ahmad [20%]; Boulus [20%]; Maysam [20%]; Muhamad [20%] |
| 168 | Meeting - Review Packages | 2016-04-17 11:50 → 2016-04-18 11:50 A (+1d) | 2016-04-17 14:50 → 2016-04-18 14:50 A (+1d) |  | 0% → 100% | 0.77d → none |  | was named Meeting - Review Packages & Deployment Diagrams; resources none → Ahdab [20%]; Ahmad [20%]; Boulus [20%]; Maysam [20%]; Muhamad [20%] |
| 169 | Packages are finished | 2016-04-17 14:50 → 2016-04-18 14:50 A (+1d) | 2016-04-17 14:50 → 2016-04-18 14:50 A (+1d) |  | 0% → 100% | 0.77d → none |  | was named Packages & Deployment Diagrams are finished; resources none → Ahdab [20%]; Ahmad [20%]; Boulus [20%]; Maysam [20%]; Muhamad [20%] |
| 170 | Answer questions | 2016-04-17 14:50 → 2016-04-18 14:50 A (+1d) | 2016-04-18 09:50 → 2016-04-19 09:50 A (+1d) |  | 0% → 100% | 0.77d → none | 166 → 166, 169 | resources none → Ahdab [20%]; Ahmad [20%]; Boulus [20%]; Maysam [20%]; Muhamad [20%] |
| 171 | Development Prototype on the base of OCSF | 2016-04-18 09:50 → 2016-04-19 09:50 A (+1d) | 2016-04-21 09:50 → 2016-05-01 09:50 A (+10d) |  | 0% → 100% | 0.77d → none |  | resources none → Ahdab [20%]; Ahmad [20%]; Boulus [20%]; Maysam [20%]; Muhamad [20%] |
| 172 | **Week7** | 2016-05-01 08:00 → 2016-05-01 09:50 A | 2016-05-01 17:00 → 2016-05-02 09:50 A (+1d) |  | 0% → 100% |  |  | was named Week7-TBD continues |
| 173 | Testing Prototype | 2016-05-01 08:00 → 2016-05-01 09:50 A | 2016-05-01 17:00 → 2016-05-02 09:50 A (+1d) |  | 0% → 100% | 0d → none |  | resources none → Ahdab [20%]; Ahmad [20%]; Boulus [20%]; Maysam [20%]; Muhamad [20%] |
| 174 | Releasing Prototype | 2016-05-01 17:00 → 2016-05-02 09:50 A (+1d) | 2016-05-01 17:00 → 2016-05-02 09:50 A (+1d) |  | 0% → 100% | 0d → none |  | resources none → Ahdab [20%]; Ahmad [20%]; Boulus [20%]; Maysam [20%]; Muhamad [20%] |
| 175 | Submission TWO is finished | 2016-05-01 17:00 → 2016-05-02 09:50 A (+1d) | 2016-05-01 17:00 → 2016-05-02 09:50 A (+1d) |  | 0% → 100% | 0d → none |  | resources none → Ahdab [20%]; Ahmad [20%]; Boulus [20%]; Maysam [20%]; Muhamad [20%] |
| 176 | SUBMIT Task Two | 2016-05-02 08:00 A | 2016-05-02 08:00 A |  | 0% → 100% | 0d → none |  |  |
| 177 | **Submission THREE: Development Code, Questions** | 2016-05-02 08:00 → 2016-05-02 09:50 |  | 25d → 24.77d |  | 0d → 6d |  |  |
| 178 | **Development project code on the base of Class and other diagrams** | 2016-05-02 08:00 → 2016-05-02 09:50 | 2016-06-02 17:00 → 2016-05-26 16:50 (-7d) | 20d → 14.75d |  | none → 14.77d |  |  |
| 179 | **Development DataBase** | 2016-05-02 08:00 → 2016-05-02 09:50 | 2016-05-03 17:00 → 2016-05-03 09:50 | 2d → 1d |  | none → 14.77d |  |  |
| 180 | Defining and creating: <Name of Table 1>, <Name of Table 2> | 2016-05-02 08:00 → 2016-05-02 09:50 | 2016-05-02 12:00 → 2016-05-02 14:50 |  |  | 1d → 14.77d |  |  |
| 181 | Defining and creating <Name of Table 2> | 2016-05-02 13:00 → 2016-05-02 14:50 | 2016-05-02 17:00 → 2016-05-03 09:50 (+1d) |  |  | 1d → 14.77d |  |  |
| 182 | **Realization Three-tier Model** | 2016-05-03 08:00 → 2016-05-03 09:50 | 2016-06-01 17:00 → 2016-05-26 16:50 (-6d) | 18d → 13.75d |  | none → 14.77d |  |  |
| 183 | **Client Design and Realization** | 2016-05-03 08:00 → 2016-05-03 09:50 | 2016-05-09 17:00 → 2016-05-10 09:50 (+1d) |  |  | none → 14.77d |  |  |
| 184 | Client GUI design and realization | 2016-05-03 08:00 → 2016-05-03 09:50 | 2016-05-04 17:00 → 2016-05-05 09:50 (+1d) |  |  | 0d → 14.77d |  |  |
| 185 | Defining Controllers and their realization | 2016-05-05 08:00 → 2016-05-05 09:50 | 2016-05-08 17:00 → 2016-05-09 09:50 (+1d) |  |  | 0d → 14.77d |  |  |
| 186 | Testing & Debugging Code | 2016-05-09 08:00 → 2016-05-09 09:50 | 2016-05-09 17:00 → 2016-05-10 09:50 (+1d) |  |  | 0d → 14.77d |  |  |
| 187 | **Server design and realization** | 2016-05-10 08:00 → 2016-05-10 09:50 | 2016-05-22 17:00 → 2016-05-19 11:50 (-3d) | 7d → 5.25d |  | none → 14.77d |  |  |
| 188 | Server GUI | 2016-05-10 08:00 → 2016-05-10 09:50 | 2016-05-10 17:00 → 2016-05-15 09:50 (+5d) |  |  | 1.75d → 14.77d |  |  |
| 189 | Realization interaction with DataBase | 2016-05-15 08:00 → 2016-05-15 09:50 | 2016-05-15 17:00 → 2016-05-16 09:50 (+1d) |  |  | 1.75d → 14.77d |  |  |
| 190 | Testing & Debugging Code | 2016-05-16 08:00 → 2016-05-16 09:50 | 2016-05-16 17:00 → 2016-05-17 09:50 (+1d) |  |  | 1.75d → 14.77d |  |  |
| 191 | **Realization Controllers** | 2016-05-17 08:00 → 2016-05-17 09:50 | 2016-05-22 17:00 → 2016-05-19 11:50 (-3d) | 4d → 2.25d |  | none → 14.77d |  |  |
| 192 | Controller1, controller2 | 2016-05-17 08:00 → 2016-05-17 09:50 | 2016-05-17 12:00 → 2016-05-17 14:50 |  |  | 1.75d → 14.77d |  |  |
| 193 | Controller3 | 2016-05-17 13:00 → 2016-05-17 14:50 | 2016-05-17 15:00 → 2016-05-17 16:50 |  |  | 1.75d → 14.77d |  |  |
| 194 | Testing & Debugging Code | 2016-05-17 15:00 → 2016-05-17 16:50 | 2016-05-19 10:00 → 2016-05-19 11:50 |  |  | 1.75d → 14.77d |  |  |
| 195 | **Entity Realization JDBC/Hibernate (ORM) or their mix** | 2016-05-19 10:00 → 2016-05-19 11:50 | 2016-05-26 10:00 → 2016-05-19 16:50 (-7d) | 3d → 0.5d |  | none → 14.77d |  |  |
| 196 | Realization <Entity1>, <Entity2>, <Entity3> | 2016-05-19 10:00 → 2016-05-19 11:50 | 2016-05-19 14:00 → 2016-05-19 15:50 |  |  | 2.5d → 14.77d |  |  |
| 197 | Realization <Entity4> | 2016-05-19 14:00 → 2016-05-19 15:50 | 2016-05-19 15:00 → 2016-05-19 16:50 |  |  | 2.5d → 14.77d |  |  |
| 198 | Realization Client-Server interaction on the base of OCSF | 2016-05-26 10:00 → 2016-05-19 16:50 (-7d) | 2016-05-30 10:00 → 2016-05-23 16:50 (-7d) |  |  | 1.75d → 14.77d |  |  |
| 199 | Testing & Debugging Code | 2016-05-30 10:00 → 2016-05-23 16:50 (-7d) | 2016-05-31 10:00 → 2016-05-26 16:50 (-5d) |  |  | 1.75d → 14.77d |  |  |
| 200 | Integration the Code | 2016-06-05 08:00 → 2016-05-26 16:50 (-10d) | 2016-06-05 17:00 → 2016-05-29 16:50 (-7d) |  |  | 9.75d → 14.77d |  |  |
| 201 | Final review meeting | 2016-06-06 08:00 → 2016-05-29 16:50 (-8d) | 2016-06-06 10:00 → 2016-05-30 09:50 (-7d) |  |  | 9.75d → 14.77d |  |  |
| 208 | **Acceptance Testing** | 2016-06-13 08:00 → 2016-06-15 08:00 (+2d) | 2016-06-14 17:00 → 2016-06-16 17:00 (+2d) |  |  | none → 0d |  |  |
| 209 | Use Case 1 | 2016-06-13 08:00 → 2016-06-15 08:00 (+2d) | 2016-06-13 17:00 → 2016-06-15 17:00 (+2d) |  |  |  |  |  |
| 210 | Use Case 2 | 2016-06-14 08:00 → 2016-06-16 08:00 (+2d) | 2016-06-14 17:00 → 2016-06-16 17:00 (+2d) |  |  |  |  |  |
